# AgenciaDigital

Schedule from ProjectLibre, 2027-01-04 to 2027-11-12.

## Calendars

- Estandar: Mon-Fri 08:00-12:00, 13:00-17:00; Sat-Sun off.

## Resources

| Resource |
| --- |
| No Asignado |

## Schedule

| ID | WBS | Task | Duration | Start | Finish | Predecessors |
| --- | --- | --- | --- | --- | --- | --- |
| 1 | 1 | **Dirección y gestión del proyecto** | 35d? | 2027-01-04 | 2027-02-19 |  |
| 2 | 1.1 | Formalización del inicio del proyecto | 5d? | 2027-01-04 | 2027-01-08 |  |
| 3 | 1.2 | Identificación y análisis de stakeholders | 10d? | 2027-01-11 | 2027-01-22 | 2 |
| 4 | 1.3 | Elaboración del plan de dirección del proyecto | 15d? | 2027-01-25 | 2027-02-12 | 3 |
| 5 | 1.4 | Aprobación del plan de dirección | 5d? | 2027-02-15 | 2027-02-19 | 4 |
| 6 | 1.5 | Seguimiento y control integrado | 1d? | 2027-01-04 | 2027-01-04 |  |
| 7 | 1.6 | Gestión de cambios y riesgos | 1d? | 2027-01-04 | 2027-01-04 |  |
| 8 | 2 | **Modelo operativo y planificación de la implantación** | 55d? | 2027-01-04 | 2027-03-19 |  |
| 9 | 2.1 | Análisis del modelo de negocio y requisitos operativos | 10d? | 2027-01-04 | 2027-01-15 |  |
| 10 | 2.2 | Definición de la estructura organizativa | 10d? | 2027-01-18 | 2027-01-29 | 9 |
| 11 | 2.3 | Diseño del modelo operativo | 15d? | 2027-02-01 | 2027-02-19 | 10 |
| 12 | 2.4 | Elaboración del plan de implantación | 15d? | 2027-02-22 | 2027-03-12 | 11 |
| 13 | 2.5 | Validación y aprobación del modelo operativo | 5d? | 2027-03-15 | 2027-03-19 | 12 |
| 14 | 3 | **Constitución legal, administrativa y financiera** | 75d? | 2027-01-04 | 2027-04-16 |  |
| 15 | 3.1 | Definición de la forma jurídica y estructura societaria | 10d? | 2027-01-04 | 2027-01-15 |  |
| 16 | 3.2 | Preparación de la documentación de constitución | 10d? | 2027-01-18 | 2027-01-29 | 15 |
| 17 | 3.3 | Formalización notarial e inscripción registral | 20d? | 2027-02-01 | 2027-02-26 | 16 |
| 18 | 3.4 | Altas fiscales, laborales y administrativas | 10d? | 2027-03-01 | 2027-03-12 | 17 |
| 19 | 3.5 | Apertura de cuentas y configuración financiera | 10d? | 2027-03-15 | 2027-03-26 | 18 |
| 20 | 3.6 | Preparación de contratos y procedimientos administrativos | 15d? | 2027-03-29 | 2027-04-16 | 19 |
| 21 | 4 | **Organización y equipo** | 85d? | 2027-01-04 | 2027-04-30 |  |
| 22 | 4.1 | Definición de perfiles, roles y responsabilidades | 10d? | 2027-01-04 | 2027-01-15 |  |
| 23 | 4.2 | Elaboración del plan de contratación | 10d? | 2027-01-18 | 2027-01-29 | 22 |
| 24 | 4.3 | Selección y contratación del equipo inicial | 30d? | 2027-02-01 | 2027-03-12 | 23 |
| 25 | 4.4 | Incorporación y onboarding del personal | 15d? | 2027-03-15 | 2027-04-02 | 24 |
| 26 | 4.5 | Formación en procesos, herramientas y metodologías | 15d? | 2027-04-05 | 2027-04-23 | 25 |
| 27 | 4.6 | Validación de la preparación operativa del equipo | 5d? | 2027-04-26 | 2027-04-30 | 26 |

| ID | WBS | Task | Duration | Start | Finish | Predecessors |
| --- | --- | --- | --- | --- | --- | --- |
| 28 | 5 | **Catálogo de servicios y modelo de delivery** | 80d? | 2027-01-04 | 2027-04-23 |  |
| 29 | 5.1 | Definición de las cinco líneas de servicio | 15d? | 2027-01-04 | 2027-01-22 |  |
| 30 | 5.2 | Diseño del catálogo de servicios y entregables | 15d? | 2027-01-25 | 2027-02-12 | 29 |
| 31 | 5.3 | Definición del modelo de estimación y presupuestación | 10d? | 2027-02-15 | 2027-02-26 | 30 |
| 32 | 5.4 | Diseño del modelo de delivery y gestión de proyectos | 20d? | 2027-03-01 | 2027-03-26 | 31 |
| 33 | 5.5 | Elaboración de plantillas y estándares de entrega | 15d? | 2027-03-29 | 2027-04-16 | 32 |
| 34 | 5.6 | Validación y aprobación del catálogo y modelo de delivery | 5d? | 2027-04-19 | 2027-04-23 | 33 |
| 35 | 6 | **Plataforma tecnológica** | 110d? | 2027-01-04 | 2027-06-04 |  |
| 36 | 6.1 | Definición de requisitos tecnológicos y arquitectura de referencia | 15d? | 2027-01-04 | 2027-01-22 |  |
| 37 | 6.2 | Selección de proveedores cloud y herramientas tecnológicas | 10d? | 2027-01-25 | 2027-02-05 | 36 |
| 38 | 6.3 | Configuración de infraestructura cloud y entornos de trabajo | 20d? | 2027-02-08 | 2027-03-05 | 37 |
| 39 | 6.4 | Implantación de repositorios y pipelines CI/CD | 15d? | 2027-03-08 | 2027-03-26 | 38 |
| 40 | 6.5 | Configuración de herramientas de gestión y documentación | 10d? | 2027-03-29 | 2027-04-09 | 39 |
| 41 | 6.6 | Implantación de herramientas de testing y control de calidad | 15d? | 2027-04-12 | 2027-04-30 | 40 |
| 42 | 6.7 | Configuración de monitorización, seguridad y copias de seguridad | 15d? | 2027-05-03 | 2027-05-21 | 41 |
| 43 | 6.8 | Pruebas de integración y validación de la plataforma tecnológica | 10d? | 2027-05-24 | 2027-06-04 | 42 |
| 44 | 7 | Procesos, calidad y gobierno | 1d? | 2027-01-04 | 2027-01-04 |  |
| 45 | 8 | **Definición del modelo de gobierno y responsabilidades** | 90d? | 2027-01-04 | 2027-05-07 |  |
| 46 | 8.1 | Diseño de procesos de gestión de proyectos | 10d? | 2027-01-04 | 2027-01-15 |  |
| 47 | 8.2 | Definición de estándares de calidad y criterios de aceptación | 15d? | 2027-01-18 | 2027-02-05 | 46 |
| 48 | 8.3 | Diseño de procesos de gestión de riesgos y cambios | 15d? | 2027-02-08 | 2027-02-26 | 47 |
| 49 | 8.4 | Definición de políticas de seguridad y protección de datos | 10d? | 2027-03-01 | 2027-03-12 | 48 |
| 50 | 8.5 | Implantación de procesos de documentación y gestión del conocimiento | 15d? | 2027-03-15 | 2027-04-02 | 49 |
| 51 | 8.6 | Configuración de indicadores KPI y mecanismos de seguimiento | 15d? | 2027-04-05 | 2027-04-23 | 50 |
| 52 | 8.7 | Validación y aprobación del sistema de procesos y gobierno | 10d? | 2027-04-26 | 2027-05-07 | 51 |

| ID | WBS | Task | Duration | Start | Finish | Predecessors |
| --- | --- | --- | --- | --- | --- | --- |
| 53 | 9 | **Capacidades comerciales y de marketing** | 110d? | 2027-01-04 | 2027-06-04 |  |
| 54 | 9.1 | Definición de la estrategia comercial y posicionamiento de mercado | 15d? | 2027-01-04 | 2027-01-22 |  |
| 55 | 9.2 | Desarrollo de la identidad corporativa y materiales de marca | 15d? | 2027-01-25 | 2027-02-12 | 54 |
| 56 | 9.3 | Diseño y desarrollo del sitio web corporativo | 20d? | 2027-02-15 | 2027-03-12 | 55 |
| 57 | 9.4 | Selección y configuración del sistema CRM | 15d? | 2027-03-15 | 2027-04-02 | 56 |
| 58 | 9.5 | Elaboración de propuestas comerciales y materiales de ventas | 15d? | 2027-04-05 | 2027-04-23 | 57 |
| 59 | 9.6 | Definición de procesos comerciales y gestión de clientes | 15d? | 2027-04-26 | 2027-05-14 | 58 |
| 60 | 9.7 | Preparación de canales digitales y herramientas de marketing | 10d? | 2027-05-17 | 2027-05-28 | 59 |
| 61 | 9.8 | Validación y aprobación de las capacidades comerciales | 5d? | 2027-05-31 | 2027-06-04 | 60 |
| 62 | 10 | **Proyectos piloto** | 225d? | 2027-01-04 | 2027-11-12 |  |
| 63 | 10.1 | Confirmación del alcance y requisitos de los tres proyectos piloto | 10d? | 2027-01-04 | 2027-01-15 |  |
| 64 | 10.2 | Planificación detallada de los proyectos piloto | 15d? | 2027-01-18 | 2027-02-05 | 63 |
| 65 | 10.3 | Preparación de equipos y entornos de ejecución | 10d? | 2027-02-08 | 2027-02-19 | 64 |
| 66 | 10.4 | Ejecución del proyecto piloto 1 | 45d? | 2027-02-22 | 2027-04-23 | 65 |
| 67 | 10.5 | Ejecución del proyecto piloto 2 | 60d? | 2027-04-26 | 2027-07-16 | 66 |
| 68 | 10.6 | Ejecución del proyecto piloto 3 | 60d? | 2027-07-19 | 2027-10-08 | 67 |
| 69 | 10.7 | Evaluación de resultados y recopilación de indicadores KPI | 15d? | 2027-10-11 | 2027-10-29 | 68 |
| 70 | 10.8 | Validación y aceptación formal de los tres proyectos piloto | 10d? | 2027-11-01 | 2027-11-12 | 69 |
| 71 | 11 | **Validación y transición a operaciones** | 65d? | 2027-01-04 | 2027-04-02 |  |
| 72 | 11.1 | Evaluación integral de los resultados del proyecto | 10d? | 2027-01-04 | 2027-01-15 |  |
| 73 | 11.2 | Verificación del cumplimiento de los objetivos y criterios de aceptación | 10d? | 2027-01-18 | 2027-01-29 | 72 |
| 74 | 11.3 | Preparación de la documentación de transición a operaciones | 15d? | 2027-02-01 | 2027-02-19 | 73 |
| 75 | 11.4 | Transferencia de conocimientos y responsabilidades al equipo operativo | 15d? | 2027-02-22 | 2027-03-12 | 74 |
| 76 | 11.5 | Validación de la preparación operativa de la agencia | 10d? | 2027-03-15 | 2027-03-26 | 75 |
| 77 | 11.6 | Aprobación formal de la transición a operaciones | 5d? | 2027-03-29 | 2027-04-02 | 76 |

| ID | WBS | Task | Duration | Start | Finish | Predecessors |
| --- | --- | --- | --- | --- | --- | --- |
| 78 | 12 | **Cierre del proyecto** | 40d? | 2027-01-04 | 2027-02-26 |  |
| 79 | 12.1 | Verificación final de entregables y compromisos contractuales | 5d? | 2027-01-04 | 2027-01-08 |  |
| 80 | 12.2 | Evaluación final del presupuesto, cronograma y desempeño | 5d? | 2027-01-11 | 2027-01-15 | 79 |
| 81 | 12.3 | Elaboración del informe final del proyecto | 10d? | 2027-01-18 | 2027-01-29 | 80 |
| 82 | 12.4 | Documentación de lecciones aprendidas y recomendaciones | 5d? | 2027-02-01 | 2027-02-05 | 81 |
| 83 | 12.5 | Cierre administrativo, financiero y contractual | 10d? | 2027-02-08 | 2027-02-19 | 82 |
| 84 | 12.6 | Presentación y aprobación del acta de cierre del proyecto | 5d? | 2027-02-22 | 2027-02-26 | 83 |
